# Управління ротою РРР - Бойове управління (цикл 24 год)

Schedule from MS Project XML, 2026-05-02 to 2026-05-04, 24 hours a day.
Блок-схема бойового управління роти
Розвідувальний батальйон

## Calendars

- Бойовий цикл 24/7: Mon-Sun 00:00-23:59.

## Resources

| Resource | Group |
| --- | --- |
| капітан Командир роти | Командир роти |
| старший лейтенант ЗКР з психологічної підтримки | ЗКР з психологічної підтримки |
| молодший сержант ШЕВЦОВ Сергій Анатолійович «ШЕВА» | Старший технік роти |
| головний сержант Головний сержант роти | Головний сержант роти |
| молодший сержант ОРЛОВ Борис Борисович «ВЕНОМ» | Сержант із МЗ |
| сержант Старший бойовий медик | Старший бойовий медик |
| старший лейтенант Начальник ГОІ | Начальник ГОІ |
| молодший лейтенант АМЕЛЬКІН Василь Сергійович «КОЛУМБ» | КВ — 1 Взвод Радіорозвідки |
| молодший лейтенант МУСІЄНКА Віталія Євгенійович | КВ — 2 Взвод Радіорозвідки |
| старший лейтенант КВ — Взвод Радіоелектронної Розвідки | КВ — Взвод Радіоелектронної Розвідки |
| старший лейтенант КВ — Взвод Безпілотних | КВ — Взвод Безпілотних |
| старший сержант Начальник РМО | Начальник РМО |

## Schedule

| ID | WBS | Task | Duration | Start | Finish | Predecessors | Resources | Work |
| --- | --- | --- | --- | --- | --- | --- | --- | --- |
| 1 | 1 | **Цикл управління ротою РРР (24 год)** | 2.46d | 2026-05-02 08:00 | 2026-05-04 19:00 |  |  | 59h |
| 2 | 1.1 | **I. Підготовка управління** | 0.21d | 2026-05-02 08:00 | 2026-05-02 13:00 |  |  | 5h |
| 3 | 1.1.1 | Отримання бойового завдання від командира батальйону | 0.04d | 2026-05-02 08:00 | 2026-05-02 09:00 |  | капітан Командир роти | 1h |
| 4 | 1.1.2 | З'ясування завдання, виділення основних задач | 0.08d | 2026-05-02 09:00 | 2026-05-02 11:00 | 3 | капітан Командир роти; старший лейтенант ЗКР з психологічної підтримки | 2h |
| 5 | 1.1.3 | Орієнтування заступників і командирів підрозділів | 0.04d | 2026-05-02 11:00 | 2026-05-02 12:00 | 4 | капітан Командир роти | 1h |
| 6 | 1.1.4 | Розрахунок часу на підготовку бойових дій | 0.04d | 2026-05-02 12:00 | 2026-05-02 13:00 | 5 | капітан Командир роти; головний сержант Головний сержант роти | 1h |
| 7 | 1.2 | **II. Оцінка обстановки** | 0.5d | 2026-05-02 13:00 | 2026-05-03 01:00 | 2 |  | 12h |
| 8 | 1.2.1 | Оцінка противника (склад, можливості, вірогідні дії) | 0.17d | 2026-05-02 13:00 | 2026-05-02 17:00 |  | старший лейтенант Начальник ГОІ; молодший лейтенант АМЕЛЬКІН Василь Сергійович «КОЛУМБ»; молодший лейтенант МУСІЄНКА Віталія Євгенійович; старший лейтенант КВ — Взвод Радіоелектронної Розвідки; старший лейтенант КВ — Взвод Безпілотних | 4h |
| 9 | 1.2.2 | Оцінка своїх сил, стану підрозділів та озброєння | 0.08d | 2026-05-02 17:00 | 2026-05-02 19:00 | 8 | капітан Командир роти; молодший сержант ШЕВЦОВ Сергій Анатолійович «ШЕВА»; старший сержант Начальник РМО | 2h |
| 10 | 1.2.3 | Оцінка району дій (місцевість, маршрути, позиції) | 0.12d | 2026-05-02 19:00 | 2026-05-02 22:00 | 9 | капітан Командир роти; молодший лейтенант АМЕЛЬКІН Василь Сергійович «КОЛУМБ»; молодший лейтенант МУСІЄНКА Віталія Євгенійович | 3h |
| 11 | 1.2.4 | Оцінка часу, метеоумов, стану доріг | 0.04d | 2026-05-02 22:00 | 2026-05-02 23:00 | 10 | молодший сержант ШЕВЦОВ Сергій Анатолійович «ШЕВА» | 1h |
| 12 | 1.2.5 | Оцінка тилового, медичного та психологічного забезпечення | 0.08d | 2026-05-02 23:00 | 2026-05-03 01:00 | 11 | молодший сержант ОРЛОВ Борис Борисович «ВЕНОМ»; сержант Старший бойовий медик; старший лейтенант ЗКР з психологічної підтримки | 2h |
| 13 | 1.3 | **III. Прийняття рішення** | 0.25d | 2026-05-03 01:00 | 2026-05-03 07:00 | 7 |  | 6h |
| 14 | 1.3.1 | Формування задуму бойових дій роти | 0.12d | 2026-05-03 01:00 | 2026-05-03 04:00 |  | капітан Командир роти | 3h |
| 15 | 1.3.2 | Визначення задач підрозділам та порядку взаємодії | 0.08d | 2026-05-03 04:00 | 2026-05-03 06:00 | 14 | капітан Командир роти | 2h |
| 16 | 1.3.3 | Доповідь рішення командиру батальйону, отримання схвалення | 0.04d | 2026-05-03 06:00 | 2026-05-03 07:00 | 15 | капітан Командир роти | 1h |
| 17 | 1.4 | **IV. Постановка задач підрозділам** | 0.33d | 2026-05-03 07:00 | 2026-05-03 15:00 | 13 |  | 8h |
| 18 | 1.4.1 | Бойовий наказ / бойове розпорядження по роті | 0.08d | 2026-05-03 07:00 | 2026-05-03 09:00 |  | капітан Командир роти | 2h |
| 19 | 1.4.2 | Постановка задач Групі обробки інформації | 0.04d | 2026-05-03 09:00 | 2026-05-03 10:00 | 18 | старший лейтенант Начальник ГОІ | 1h |
| 20 | 1.4.3 | Постановка задач 1 взводу радіорозвідки | 0.04d | 2026-05-03 10:00 | 2026-05-03 11:00 | 19 | молодший лейтенант АМЕЛЬКІН Василь Сергійович «КОЛУМБ» | 1h |
| 21 | 1.4.4 | Постановка задач 2 взводу радіорозвідки | 0.04d | 2026-05-03 11:00 | 2026-05-03 12:00 | 20 | молодший лейтенант МУСІЄНКА Віталія Євгенійович | 1h |
| 22 | 1.4.5 | Постановка задач взводу радіоелектронної розвідки | 0.04d | 2026-05-03 12:00 | 2026-05-03 13:00 | 21 | старший лейтенант КВ — Взвод Радіоелектронної Розвідки | 1h |
| 23 | 1.4.6 | Постановка задач взводу БпАК | 0.04d | 2026-05-03 13:00 | 2026-05-03 14:00 | 22 | старший лейтенант КВ — Взвод Безпілотних | 1h |
| 24 | 1.4.7 | Постановка задач РМО (підготовка ОВТ) | 0.04d | 2026-05-03 14:00 | 2026-05-03 15:00 | 23 | старший сержант Начальник РМО | 1h |

Notes:
- 3: Виконавці: Командир роти
- 4: Виконавці: Командир роти, ЗКР з психологічної підтримки
- 5: Виконавці: Командир роти
- 6: Виконавці: Командир роти, Головний сержант роти
- 8: Виконавці: Начальник ГОІ, КВ — 1 Взвод Радіорозвідки, КВ — 2 Взвод Радіорозвідки, КВ — Взвод Радіоелектронної Розвідки, КВ — Взвод Безпілотних
- 9: Виконавці: Командир роти, Старший технік роти, Начальник РМО
- 10: Виконавці: Командир роти, КВ — 1 Взвод Радіорозвідки, КВ — 2 Взвод Радіорозвідки
- 11: Виконавці: Старший технік роти
- 12: Виконавці: Сержант із МЗ, Старший бойовий медик, ЗКР з психологічної підтримки
- 14: Виконавці: Командир роти
- 15: Виконавці: Командир роти
- 16: Виконавці: Командир роти
- 18: Виконавці: Командир роти
- 19: Виконавці: Начальник ГОІ
- 20: Виконавці: КВ — 1 Взвод Радіорозвідки
- 21: Виконавці: КВ — 2 Взвод Радіорозвідки
- 22: Виконавці: КВ — Взвод Радіоелектронної Розвідки
- 23: Виконавці: КВ — Взвод Безпілотних
- 24: Виконавці: Начальник РМО

| ID | WBS | Task | Duration | Start | Finish | Predecessors | Resources | Work |
| --- | --- | --- | --- | --- | --- | --- | --- | --- |
| 25 | 1.5 | **V. Організація забезпечення та взаємодії** | 0.42d | 2026-05-03 15:00 | 2026-05-04 01:00 | 17 |  | 10h |
| 26 | 1.5.1 | Організація розвідувально-інформаційного обміну | 0.08d | 2026-05-03 15:00 | 2026-05-03 17:00 |  | старший лейтенант Начальник ГОІ; капітан Командир роти | 2h |
| 27 | 1.5.2 | Організація зв'язку та управління (радіо, шифрозв'язок) | 0.08d | 2026-05-03 17:00 | 2026-05-03 19:00 | 26 | молодший сержант ШЕВЦОВ Сергій Анатолійович «ШЕВА» | 2h |
| 28 | 1.5.3 | Тилове та технічне забезпечення (ПММ, ЗІП, харчування) | 0.08d | 2026-05-03 19:00 | 2026-05-03 21:00 | 27 | молодший сержант ОРЛОВ Борис Борисович «ВЕНОМ»; старший сержант Начальник РМО | 2h |
| 29 | 1.5.4 | Медичне забезпечення та евакуація | 0.08d | 2026-05-03 21:00 | 2026-05-03 23:00 | 28 | сержант Старший бойовий медик | 2h |
| 30 | 1.5.5 | Психологічна підтримка особового складу | 0.08d | 2026-05-03 23:00 | 2026-05-04 01:00 | 29 | старший лейтенант ЗКР з психологічної підтримки | 2h |
| 31 | 1.6 | **VI. Контроль і виконання** | 0.58d | 2026-05-04 01:00 | 2026-05-04 15:00 | 25 |  | 14h |
| 32 | 1.6.1 | Контроль готовності підрозділів до виконання задач | 0.08d | 2026-05-04 01:00 | 2026-05-04 03:00 |  | капітан Командир роти; головний сержант Головний сержант роти | 2h |
| 33 | 1.6.2 | Виконання бойового завдання — ведення розвідки | 0.33d | 2026-05-04 03:00 | 2026-05-04 11:00 | 32 | старший лейтенант Начальник ГОІ; молодший лейтенант АМЕЛЬКІН Василь Сергійович «КОЛУМБ»; молодший лейтенант МУСІЄНКА Віталія Євгенійович; старший лейтенант КВ — Взвод Радіоелектронної Розвідки; старший лейтенант КВ — Взвод Безпілотних | 8h |
| 34 | 1.6.3 | Поточний контроль і коригування дій | 0.17d | 2026-05-04 11:00 | 2026-05-04 15:00 | 33 | капітан Командир роти | 4h |
| 35 | 1.7 | **VII. Доповіді та підсумки** | 0.17d | 2026-05-04 15:00 | 2026-05-04 19:00 | 31 |  | 4h |
| 36 | 1.7.1 | Поточні доповіді про обстановку до КБ | 0.04d | 2026-05-04 15:00 | 2026-05-04 16:00 |  | капітан Командир роти; старший лейтенант Начальник ГОІ | 1h |
| 37 | 1.7.2 | Підсумкова доповідь за добу, аналіз втрат і витрат | 0.08d | 2026-05-04 16:00 | 2026-05-04 18:00 | 36 | капітан Командир роти; молодший сержант ОРЛОВ Борис Борисович «ВЕНОМ»; сержант Старший бойовий медик | 2h |
| 38 | 1.7.3 | Постановка задач на наступну добу | 0.04d | 2026-05-04 18:00 | 2026-05-04 19:00 | 37 | капітан Командир роти | 1h |

Notes:
- 26: Виконавці: Начальник ГОІ, Командир роти
- 27: Виконавці: Старший технік роти
- 28: Виконавці: Сержант із МЗ, Начальник РМО
- 29: Виконавці: Старший бойовий медик
- 30: Виконавці: ЗКР з психологічної підтримки
- 32: Виконавці: Командир роти, Головний сержант роти
- 33: Виконавці: Начальник ГОІ, КВ — 1 Взвод Радіорозвідки, КВ — 2 Взвод Радіорозвідки, КВ — Взвод Радіоелектронної Розвідки, КВ — Взвод Безпілотних
- 34: Виконавці: Командир роти
- 36: Виконавці: Командир роти, Начальник ГОІ
- 37: Виконавці: Командир роти, Сержант із МЗ, Старший бойовий медик
- 38: Виконавці: Командир роти
